Schedule from MS Project, 2013-07-15 to 2014-02-07.
Microsoft

## Calendars

- 标准: Mon-Fri 08:00-12:00, 13:00-17:00; Sat-Sun off. Exceptions (off unless hours are given): 2013-10-12 08:00-12:00, 13:00-17:00.

## Resources

| Resource |
| --- |
| 陈亮 |
| 周文 |
| 陈毅文 |

## Schedule

| ID | WBS | Task | Duration | Start | Finish | Predecessors | Total slack | Free slack | Constraint | Resources | Work | 分配人 |
| --- | --- | --- | --- | --- | --- | --- | --- | --- | --- | --- | --- | --- |
| 1 | 1 | **分析设计阶段** | 15d | 2013-07-15 | 2013-08-02 |  |  |  |  |  | 120h |  |
| 2 | 1.1 | 需求功能点文档 | 7d | 2013-07-15 | 2013-07-23 |  | 0d |  |  | 陈亮 | 56h | 陈亮 |
| 3 | 1.2 | 原型设计(UI) | 4d | 2013-07-24 | 2013-07-29 | 2 | 0d |  |  | 陈亮 | 32h | 陈亮 |
| 4 | 1.3 | 表结构设计 | 4d | 2013-07-30 | 2013-08-02 | 3 | 0d |  |  | 陈亮 | 32h | 陈亮 |
| 5 | 2 | **美工html页面设计** | 9d | 2013-10-08 | 2013-10-17 |  |  |  |  |  | 128h |  |
| 6 | 2.1 | 登陆页面设计图 | 1d | 2013-10-08 | 2013-10-08 | 4 | 1d | 0d |  | 周文 | 8h | 周文 |
| 7 | 2.2 | 注册页面设计图 | 1d | 2013-10-08 | 2013-10-08 | 4 | 1d | 0d |  | 周文 | 8h | 周文 |
| 8 | 2.3 | 首页康讯云计算设计图 | 1d | 2013-10-09 | 2013-10-09 | 6 | 1d | 0d |  | 周文 | 8h | 周文 |
| 9 | 2.4 | 云服务产品详情设计图 | 1d | 2013-10-09 | 2013-10-09 | 7 | 1d | 0d |  | 周文 | 8h | 周文 |
| 10 | 2.5 | 云服务购买(下单)设计图 | 1d | 2013-10-10 | 2013-10-10 | 8 | 1d | 0d |  | 周文 | 8h | 周文 |
| 11 | 2.6 | 云服务试用设计图 | 1d | 2013-10-10 | 2013-10-10 | 9 | 1d | 0d |  | 周文 | 8h | 周文 |
| 12 | 2.7 | 管理控制台设计图 | 1d | 2013-10-11 | 2013-10-11 | 10 | 1d | 0d |  | 周文 | 8h | 周文 |
| 13 | 2.8 | 虚机详情设计图 | 1d | 2013-10-11 | 2013-10-11 | 11 | 1d | 0d |  | 周文 | 8h | 周文 |
| 14 | 2.9 | 确认订单设计图 | 1d | 2013-10-12 | 2013-10-12 | 12 | 1d | 0d | start no earlier than 2013-10-12 | 周文 | 8h | 周文 |
| 15 | 2.10 | 我的订单设计图 | 1d | 2013-10-12 | 2013-10-12 | 13 | 1d | 0d |  | 周文 | 8h | 周文 |
| 16 | 2.11 | 我的订单详情设计图 | 1d | 2013-10-14 | 2013-10-14 | 14 | 1d | 0d |  | 周文 | 8h | 周文 |
| 17 | 2.12 | 我的账户设计图 | 1d | 2013-10-14 | 2013-10-14 | 15 | 1d | 0d |  | 周文 | 8h | 周文 |
| 18 | 2.13 | 修改资本资料设计图 | 1d | 2013-10-15 | 2013-10-15 | 16 | 1d | 0d |  | 周文 | 8h | 周文 |
| 19 | 2.14 | 修改密码设计图 | 1d | 2013-10-15 | 2013-10-15 | 17 | 1d | 0d |  | 周文 | 8h | 周文 |
| 20 | 2.15 | 设置密保问题设计图 | 1d | 2013-10-16 | 2013-10-16 | 18 | 1d |  |  | 周文 | 8h | 周文 |
| 21 | 2.16 | 云服务使用申请列表设计图 | 1d | 2013-10-16 | 2013-10-16 | 19 | 1d |  |  | 周文 | 8h | 周文 |
| 22 | 3 | **编码实现阶段** | 86d | 2013-10-08 | 2014-02-03 |  |  |  |  |  | 1012h |  |
| 23 | 3.1 | **web前台开发** | 55d | 2013-10-31 | 2014-01-15 |  |  |  |  |  | 232h |  |
| 24 | 3.1.1 | 用户权限管理 | 4d | 2013-10-31 | 2013-11-05 | 20 | 68d |  | start no earlier than 2013-10-31 | 陈亮 | 32h | 陈亮 |

| ID | WBS | Task | Duration | Start | Finish | Predecessors | Total slack | Free slack | Constraint | Resources | Work | 分配人 |
| --- | --- | --- | --- | --- | --- | --- | --- | --- | --- | --- | --- | --- |
| 25 | 3.1.2 | **用户中心** | 11d | 2013-11-05 | 2013-11-19 |  |  |  |  |  | 88h |  |
| 26 | 3.1.2.1 | 用户注册 | 3d | 2013-11-05 | 2013-11-07 | 21 | 0d |  | start no earlier than 2013-11-05 | 陈亮 | 24h | 陈亮 |
| 27 | 3.1.2.2 | 用户登陆 | 2d | 2013-11-08 | 2013-11-11 | 26 | 0d |  |  | 陈亮 | 16h | 陈亮 |
| 28 | 3.1.2.3 | 查看个人信息 | 1d | 2013-11-12 | 2013-11-12 | 27 | 0d |  |  | 陈亮 | 8h | 陈亮 |
| 29 | 3.1.2.4 | 个人资料修改 | 2d | 2013-11-13 | 2013-11-14 | 28 | 0d |  |  | 陈亮 | 16h | 陈亮 |
| 30 | 3.1.2.5 | 密码修改 | 1d | 2013-11-15 | 2013-11-15 | 29 | 0d |  |  | 陈亮 | 8h | 陈亮 |
| 31 | 3.1.2.6 | 密码保护问题 | 2d | 2013-11-18 | 2013-11-19 | 30 | 0d |  |  | 陈亮 | 16h | 陈亮 |
| 32 | 3.1.3 | **订单** | 10d | 2013-11-20 | 2013-12-03 |  | 0d |  |  |  | 80h |  |
| 33 | 3.1.3.1 | 下单 | 3d | 2013-11-20 | 2013-11-22 | 31 | 0d |  |  | 陈亮 | 24h | 陈亮 |
| 34 | 3.1.3.2 | 确认订单 | 1d | 2013-11-25 | 2013-11-25 | 33 | 0d |  |  | 陈亮 | 8h | 陈亮 |
| 35 | 3.1.3.3 | 提交审核 | 1d | 2013-11-26 | 2013-11-26 | 34 | 0d |  |  | 陈亮 | 8h | 陈亮 |
| 36 | 3.1.3.4 | 订单查看 | 1d | 2013-11-27 | 2013-11-27 | 35 | 0d |  |  | 陈亮 | 8h | 陈亮 |
| 37 | 3.1.3.5 | 订单详情 | 1d | 2013-11-28 | 2013-11-28 | 36 | 0d |  | start no earlier than 2013-09-16 | 陈亮 | 8h | 陈亮 |
| 38 | 3.1.3.6 | 订单作废 | 1d | 2013-11-29 | 2013-11-29 | 37 | 0d |  |  | 陈亮 | 8h | 陈亮 |
| 39 | 3.1.3.7 | 升级 | 2d | 2013-12-02 | 2013-12-03 | 38 | 0d |  |  | 陈亮 | 16h | 陈亮 |
| 40 | 3.1.4 | **首页** | 4d | 2013-12-04 | 2013-12-09 |  |  |  |  |  | 32h |  |
| 41 | 3.1.4.1 | 产品与服务列表 | 2d | 2013-12-04 | 2013-12-05 | 39 | 0d |  |  | 陈亮 | 16h | 陈亮 |
| 42 | 3.1.4.2 | 产品介绍 | 2d | 2013-12-06 | 2013-12-09 | 41 | 0d |  |  | 陈亮 | 16h | 陈亮 |
| 43 | 3.2 | **cms后台管理系统开发** | 50d | 2013-10-08 | 2013-12-13 |  |  |  |  |  | 284h |  |
| 44 | 3.2.1 | 用户管理 | 2d | 2013-10-08 | 2013-10-09 |  | 14.5d | 0d | start no earlier than 2013-10-08 | 陈亮 | 16h | 陈亮 |
| 45 | 3.2.2 | 权限管理 | 2d | 2013-10-10 | 2013-10-11 | 44 | 14.5d |  | start no earlier than 2013-09-30 | 陈亮 | 16h | 陈亮 |
| 46 | 3.2.3 | 查看订单 | 1d | 2013-12-10 | 2013-12-10 | 45 | -27.5d | 0d | start no earlier than 2013-12-10 | 陈亮 | 8h | 陈亮 |
| 47 | 3.2.4 | 删除订单 | 1d | 2013-12-11 | 2013-12-11 | 46 | -27.5d | 0d |  | 陈亮 | 8h | 陈亮 |
| 48 | 3.2.5 | 审核订单 | 1d | 2013-12-12 | 2013-12-12 | 47 | -27.5d | 0d |  | 陈亮 | 8h | 陈亮 |
| 49 | 3.2.6 | 租户列表 | 1d | 2013-12-13 | 2013-12-13 | 48 | -27.5d | 0d |  | 陈亮 | 8h | 陈亮 |
| 50 | 3.2.7 | 禁用租户 | 1d | 2013-12-16 | 2013-12-16 | 49 | -27.5d | 0d | start no earlier than 2013-10-07 | 陈亮 | 8h | 陈亮 |
| 51 | 3.2.8 | 初始化租户密码 | 1d | 2013-12-17 | 2013-12-17 | 50 | -27.5d | 0d |  | 陈亮 | 8h | 陈亮 |
| 52 | 3.2.9 | 产品与服务配置管理 | 2d | 2013-12-18 | 2013-12-19 | 51 | -27.5d | 0d |  | 陈亮 | 16h | 陈亮 |
| 53 | 3.2.10 | VMM列表 | 1d | 2013-12-20 | 2013-12-20 | 52 | -27.5d | 0d |  | 陈亮 | 8h | 陈亮 |
| 54 | 3.2.11 | VMM开机 | 1.5d | 2013-12-23 | 2013-12-24 | 53 | -27.5d | 0d |  | 陈亮 | 12h | 陈亮 |
| 55 | 3.2.12 | VMM关机 | 1d | 2013-12-24 | 2013-12-25 | 54 | -27.5d | 0d | start no earlier than 2013-11-14 | 陈亮 | 8h | 陈亮 |
| 56 | 3.2.13 | VMM重启 | 1d | 2013-12-25 | 2013-12-26 | 55 | -27.5d | 0d |  | 陈亮 | 8h | 陈亮 |
| 57 | 3.2.14 | VMM重装系统 | 2d | 2013-12-26 | 2013-12-30 | 56 | -27.5d | 0d |  | 陈亮 | 16h | 陈亮 |
| 58 | 3.2.15 | VMM预装软件 | 2d | 2013-12-30 | 2014-01-01 | 57 | -27.5d | 0d |  | 陈亮 | 16h | 陈亮 |
| 59 | 3.2.16 | VMM详细信息查看 | 1d | 2014-01-01 | 2014-01-02 | 58 | -27.5d | 0d |  | 陈亮 | 8h | 陈亮 |
| 60 | 3.2.17 | 添加ISO镜像 | 1d | 2014-01-02 | 2014-01-03 | 59 | -27.5d | 0d |  | 陈亮 | 8h | 陈亮 |
| 61 | 3.2.18 | 查询ISO镜像 | 1d | 2014-01-03 | 2014-01-06 | 60 | -27.5d | 0d |  | 陈亮 | 8h | 陈亮 |
| 62 | 3.2.19 | 删除ISO镜像 | 1d | 2014-01-06 | 2014-01-07 | 61 | -27.5d | 0d |  | 陈亮 | 8h | 陈亮 |
| 63 | 3.2.20 | 修改ISO镜像 | 1d | 2014-01-07 | 2014-01-08 | 62 | -27.5d | 0d |  | 陈亮 | 8h | 陈亮 |
| 64 | 3.2.21 | 查询虚拟机与租户关系列表 | 1d | 2014-01-08 | 2014-01-09 | 63 | -27.5d | 0d |  | 陈亮 | 8h | 陈亮 |
| 65 | 3.2.22 | 修改虚拟机与租户关系 | 1d | 2014-01-09 | 2014-01-10 | 64 | -27.5d | 0d |  | 陈亮 | 8h | 陈亮 |
| 66 | 3.2.23 | 删除虚拟机与租户关系 | 1d | 2014-01-10 | 2014-01-13 | 65 | -27.5d | 0d |  | 陈亮 | 8h | 陈亮 |
| 67 | 3.2.24 | 虚拟网络交换机列表 | 2d | 2014-01-13 | 2014-01-15 | 66 | -27.5d | 0d |  | 陈亮 | 16h | 陈亮 |
| 68 | 3.2.25 | 虚拟机网络交换机详情信息 | 1d | 2014-01-15 | 2014-01-16 | 67 | -27.5d | 0d |  | 陈亮 | 8h | 陈亮 |
| 69 | 3.2.26 | 添加域用户 | 1d | 2014-01-16 | 2014-01-17 | 68 | -27.5d | 0d |  | 陈亮 | 8h | 陈亮 |
| 70 | 3.2.27 | 域用户列表 | 1d | 2014-01-17 | 2014-01-20 | 69 | -27.5d | 0d | start no earlier than 2013-11-18 | 陈亮 | 8h | 陈亮 |
| 71 | 3.2.28 | 编辑域用户 | 1d | 2014-01-20 | 2014-01-21 | 70 | -27.5d | 0d |  | 陈亮 | 8h | 陈亮 |
| 72 | 3.2.29 | 删除域用户 | 1d | 2014-01-21 | 2014-01-22 | 71 | -27.5d | 0d |  | 陈亮 | 8h | 陈亮 |

| ID | WBS | Task | Duration | Start | Finish | Predecessors | Total slack | Constraint | Resources | Work | 分配人 |
| --- | --- | --- | --- | --- | --- | --- | --- | --- | --- | --- | --- |
| 73 | 3.3 | **应用服务器开发** | 20d | 2013-10-30 | 2013-11-26 |  |  |  |  | 496h |  |
| 74 | 3.3.1 | **PowerShell接口开发** | 14d | 2013-10-12 | 2013-10-30 |  |  |  |  | 448h |  |
| 75 | 3.3.1.1 | 创建域用户 | 1d | 2013-10-12 | 2013-10-12 |  | 0d | start no earlier than 2013-10-12 | 陈亮; 陈毅文 | 16h | 陈亮,陈毅文 |
| 76 | 3.3.1.2 | 修改域用户 | 1d | 2013-10-12 | 2013-10-12 |  | 0d |  | 陈亮; 陈毅文 | 16h | 陈亮,陈毅文 |
| 77 | 3.3.1.3 | 删除域用户 | 1d | 2013-10-14 | 2013-10-14 | 75 | 0d |  | 陈亮; 陈毅文 | 16h | 陈亮,陈毅文 |
| 78 | 3.3.1.4 | 查询域用户 | 1d | 2013-10-14 | 2013-10-14 | 76 | 0d |  | 陈亮; 陈毅文 | 16h | 陈亮,陈毅文 |
| 79 | 3.3.1.5 | 创建VM | 1d | 2013-10-15 | 2013-10-15 | 77 | 0d |  | 陈亮; 陈毅文 | 16h | 陈亮,陈毅文 |
| 80 | 3.3.1.6 | 修改VM | 1d | 2013-10-15 | 2013-10-15 | 78 | 0d |  | 陈亮; 陈毅文 | 16h | 陈亮,陈毅文 |
| 81 | 3.3.1.7 | 删除VM | 1d | 2013-10-16 | 2013-10-16 | 79 | 0d |  | 陈亮; 陈毅文 | 16h | 陈亮,陈毅文 |
| 82 | 3.3.1.8 | 获取所有VM | 1d | 2013-10-16 | 2013-10-16 | 80 | 0d |  | 陈亮; 陈毅文 | 16h | 陈亮,陈毅文 |
| 83 | 3.3.1.9 | VM开机 | 1d | 2013-10-17 | 2013-10-17 | 81 | 0d |  | 陈亮; 陈毅文 | 16h | 陈亮,陈毅文 |
| 84 | 3.3.1.10 | VM关机 | 1d | 2013-10-17 | 2013-10-17 | 82 | 0d |  | 陈亮; 陈毅文 | 16h | 陈亮,陈毅文 |
| 85 | 3.3.1.11 | VM重启 | 1d | 2013-10-18 | 2013-10-18 | 83 | 0d |  | 陈亮; 陈毅文 | 16h | 陈亮,陈毅文 |
| 86 | 3.3.1.12 | VM重装系统 | 1d | 2013-10-18 | 2013-10-18 | 84 | 0d |  | 陈亮; 陈毅文 | 16h | 陈亮,陈毅文 |
| 87 | 3.3.1.13 | VM预装软件 | 1d | 2013-10-21 | 2013-10-21 | 85 | 0d |  | 陈亮; 陈毅文 | 16h | 陈亮,陈毅文 |
| 88 | 3.3.1.14 | 获取VM的CPU数量 | 1d | 2013-10-21 | 2013-10-21 | 86 | 0d |  | 陈亮; 陈毅文 | 16h | 陈亮,陈毅文 |
| 89 | 3.3.1.15 | 获取VM内存 | 1d | 2013-10-22 | 2013-10-22 | 87 | 0d |  | 陈亮; 陈毅文 | 16h | 陈亮,陈毅文 |
| 90 | 3.3.1.16 | 获取VM进程 | 1d | 2013-10-22 | 2013-10-22 | 88 | 0d |  | 陈亮; 陈毅文 | 16h | 陈亮,陈毅文 |
| 91 | 3.3.1.17 | 获取硬盘大小 | 1d | 2013-10-23 | 2013-10-23 | 89 | 0d |  | 陈亮; 陈毅文 | 16h | 陈亮,陈毅文 |
| 92 | 3.3.1.18 | 删除VM | 1d | 2013-10-23 | 2013-10-23 | 90 | 0d |  | 陈亮; 陈毅文 | 16h | 陈亮,陈毅文 |
| 93 | 3.3.1.19 | 设置VM的CPU个数 | 1d | 2013-10-24 | 2013-10-24 | 91 | 0d |  | 陈亮; 陈毅文 | 16h | 陈亮,陈毅文 |
| 94 | 3.3.1.20 | 设置VM内存 | 1d | 2013-10-24 | 2013-10-24 | 92 | 0d |  | 陈亮; 陈毅文 | 16h | 陈亮,陈毅文 |
| 95 | 3.3.1.21 | 设置硬盘大小 | 1d | 2013-10-25 | 2013-10-25 | 93 | 0d |  | 陈亮; 陈毅文 | 16h | 陈亮,陈毅文 |
| 96 | 3.3.1.22 | 设置虚拟串行端口 | 1d | 2013-10-25 | 2013-10-25 | 94 | 0d |  | 陈亮; 陈毅文 | 16h | 陈亮,陈毅文 |
| 97 | 3.3.1.23 | 设置VM群集设置 | 1d | 2013-10-28 | 2013-10-28 | 95 | 0d |  | 陈亮; 陈毅文 | 16h | 陈亮,陈毅文 |
| 98 | 3.3.1.24 | 获取VM主机名 | 1d | 2013-10-28 | 2013-10-28 | 96 | 0d |  | 陈亮; 陈毅文 | 16h | 陈亮,陈毅文 |
| 99 | 3.3.1.25 | 获取VM摘要 | 1d | 2013-10-29 | 2013-10-29 | 97 | 0d |  | 陈亮; 陈毅文 | 16h | 陈亮,陈毅文 |
| 100 | 3.3.1.26 | 获取VM缩略图 | 1d | 2013-10-29 | 2013-10-29 | 98 | 0d |  | 陈亮; 陈毅文 | 16h | 陈亮,陈毅文 |
| 101 | 3.3.1.27 | 设置VM主机名 | 1d | 2013-10-30 | 2013-10-30 | 99 | 0d |  | 陈亮; 陈毅文 | 16h | 陈亮,陈毅文 |
| 102 | 3.3.1.28 | 设置VM状态 | 1d | 2013-10-30 | 2013-10-30 | 100 | 0d |  | 陈亮; 陈毅文 | 16h | 陈亮,陈毅文 |

| ID | WBS | Task | Duration | Start | Finish | Predecessors | Total slack | Free slack | Constraint | Resources | Work | 分配人 |
| --- | --- | --- | --- | --- | --- | --- | --- | --- | --- | --- | --- | --- |
| 103 | 3.3.2 | **定时任务开发** | 6d | 2014-01-23 | 2014-01-30 |  |  |  |  |  | 48h |  |
| 104 | 3.3.2.1 | 自动扫描已付款订单,创建虚拟机 | 3d | 2014-01-23 | 2014-01-27 | 101 | 3d | 0d |  | 陈亮 | 24h | 陈亮 |
| 105 | 3.3.2.2 | 产品使用到期提醒 | 3d | 2014-01-28 | 2014-01-30 | 102 | 0d |  | start no earlier than 2014-01-28 | 陈亮 | 24h | 陈亮 |
| 106 | 4 | **集成测试阶段** | 8d | 2014-01-29 | 2014-02-07 |  |  |  |  |  | 64h |  |
| 107 | 4.1 | 用户下单 | 1d | 2014-01-29 | 2014-01-29 |  | 7d |  | start no earlier than 2014-01-29 | 陈亮 | 8h | 陈亮 |
| 108 | 4.2 | 创建VM | 1d | 2014-01-28 | 2014-01-28 | 104 | 8d |  | start no earlier than 2013-11-28 | 陈亮 | 8h | 陈亮 |
| 109 | 4.3 | 查看VM | 1d | 2014-01-31 | 2014-01-31 | 105 | 0d |  | start no earlier than 2013-11-29 | 陈亮 | 8h | 陈亮 |
| 110 | 4.4 | 修改VM配置信息 | 1d | 2014-02-03 | 2014-02-03 | 109 | 0d |  |  | 陈亮 | 8h | 陈亮 |
| 111 | 4.5 | 重启VM | 1d | 2014-02-04 | 2014-02-04 | 110 | 0d |  |  | 陈亮 | 8h | 陈亮 |
| 112 | 4.6 | VM开机 | 1d | 2014-02-05 | 2014-02-05 | 111 | 0d |  |  | 陈亮 | 8h | 陈亮 |
| 113 | 4.7 | VM重装系统 | 1d | 2014-02-06 | 2014-02-06 | 112 | 0d |  |  | 陈亮 | 8h | 陈亮 |
| 114 | 4.8 | 创建域用户 | 1d | 2014-02-07 | 2014-02-07 | 113 | 0d |  |  | 陈亮 | 8h | 陈亮 |
